# 版本开发计划

Schedule from MS Project, 2020-06-01 to 2020-06-19.

## Calendars

- 标准: Mon-Fri 08:00-12:00, 13:00-17:00; Sat-Sun off.

## Resources

| Resource |
| --- |
| 李昕 |
| 高晓斌 |
| 薛松 |
| 方超 |
| ALL |
| ? |

## Schedule

| ID | WBS | Task | Type | Duration | Start | Finish | Predecessors | Total slack | Free slack | Constraint | Resources | Work |
| --- | --- | --- | --- | --- | --- | --- | --- | --- | --- | --- | --- | --- |
| 1 | 1 | **扫描软件专题** |  | 11d | 2020-06-01 | 2020-06-15 |  | 4d |  |  |  | 184h |
| 2 | 1.1 | 视野太多时退出视野 |  | 2d | 2020-06-01 | 2020-06-02 |  | 4d | 0d |  | 高晓斌 | 16h |
| 3 | 1.2 | 扫描后上载的解耦 |  | 3d | 2020-06-03 | 2020-06-05 | 2 | 4d | 0d |  | 高晓斌 | 24h |
| 4 | 1.3 | 通过预览图识别玻片位置异常 |  | 4d | 2020-06-08 | 2020-06-11 | 3 | 4d | 0d |  | 高晓斌; 李昕 | 64h |
| 5 | 1.4 | 玻片质量预判方案 |  | 3d | 2020-06-01 | 2020-06-03 |  | 5d | 0d |  | 李昕 | 24h |
| 6 | 1.5 | 玻片图像纠偏方案 |  | 3d | 2020-06-04 | 2020-06-08 | 5 | 5d |  |  | 李昕 | 24h |
| 7 | 1.6 | 10倍图扫描优化可行性分析 |  | 2d | 2020-06-12 | 2020-06-15 | 4 | 4d |  |  | 高晓斌 | 16h |
| 8 | 1.7 | 送片机接口变更 |  | 2d | 2020-06-01 | 2020-06-02 |  | 13d |  |  | 高晓斌 | 16h |
| 10 | 2 | **扫描分析客户端软件** |  | 10d | 2020-06-01 | 2020-06-12 |  | 5d |  |  |  | 120h |
| 11 | 2.1 | 右边图像显示区域支持细胞操作 |  | 5d | 2020-06-01 | 2020-06-05 |  | 5d | 0d | finish no earlier than 2020-06-05 | 薛松 | 40h |
| 12 | 2.2 | 巨核细胞计数功能 |  | 5d | 2020-06-08 | 2020-06-12 | 11 | 5d |  |  | 薛松; 李昕 | 80h |
| 14 | 3 | **专题工作** |  | 15d | 2020-06-01 | 2020-06-19 |  | 0d |  |  |  | 216h |
| 15 | 3.1 | **扫描后长时间看不到结果优化** |  | 10d | 2020-06-01 | 2020-06-12 |  | 5d |  |  |  | 16h |
| 16 | 3.1.1 | 方案确定 |  | 2d | 2020-06-01 | 2020-06-02 |  | 5d | 0d |  | ALL | 16h |
| 17 | 3.1.2 | 方案落实(金域演示前合入) |  | 8d | 2020-06-03 | 2020-06-12 | 16 | 5d |  |  |  |  |
| 20 | 3.2 | **其他任务** |  | 7d | 2020-06-01 | 2020-06-09 |  | 8d |  |  |  | 120h |
| 21 | 3.2.1 | 模型检测程序 |  | 5d | 2020-06-01 | 2020-06-05 |  | 10d |  |  | 方超; 薛松 | 80h |
| 22 | 3.2.2 | 金域玻片标记训练 |  | 5d | 2020-06-03 | 2020-06-09 |  | 8d |  | start no earlier than 2020-06-03 | 方超 | 40h |
| 24 | 3.3 | **系统测试** |  | 10d | 2020-06-08 | 2020-06-19 |  | 0d |  |  |  | 80h |
| 25 | 3.3.1 | 6-8版本系统测试 |  | 5d | 2020-06-08 | 2020-06-12 | 31 | 5d |  |  | ? | 40h |
| 26 | 3.3.2 | 6-15版本系统测试 |  | 5d | 2020-06-15 | 2020-06-19 | 32 | 0d |  |  | ? | 40h |
| 30 | 3.3.3 | **版本发布计划** |  | 5d | 2020-06-08 | 2020-06-15 |  | 0d |  |  |  |  |
| 31 | 3.3.3.1 | 6月8日版本(金域演示) | milestone | 0d | 2020-06-08 | 2020-06-08 | 2, 3, 11 | 5d | 0d | start no earlier than 2020-06-08 |  |  |
| 32 | 3.3.3.2 | 6月15日版本 | milestone | 0d | 2020-06-15 | 2020-06-15 |  | 0d |  | start no earlier than 2020-06-15 |  |  |

Notes:
- 2: 6-8版本
- 3: 6-8版本
- 4: 6-15版本, 尽量反合6-8版本
- 5: 6-15版本
- 6: 6-15版本
- 8: 时间待定, 取决于单板侧联调
- 11: 6-8版本
- 12: 6-15版本
- 16: 6/2 头脑风暴讨论一下
- 17: 6-15版本, 反合6/8演示版本
- 31: 用于给金域演示, 留一周测试时间
